# Project Sustainable Jacket_Team Everest_Assignment 3

Schedule from MS Project, 2023-06-26 to 2024-01-10, costs in $.

## Calendars

- Standard: Mon-Fri 08:00-12:00, 13:00-17:00; Sat-Sun off.

## Resources

| Resource | Unit | Rate |
| --- | --- | --- |
| Designer 1 |  | 30 |
| Project Manager |  | 60 |
| Product Developer 1 |  | 16.5 |
| Product Developer 2 |  | 16.5 |
| Procurement Manager |  | 40 |
| Logistics Manager |  | 28 |
| Marketing Manager |  | 30 |
| CAD Designer |  | 30 |
| CAD Software |  |  |
| Sample Sewer |  | 25 |
| Outsource fee for 2000 Jackets |  |  |
| Delivery Service for distribution |  |  |
| Logistic Management System |  |  |
| SEO |  |  |
| Wool Fabric | Bundle | 100 |
| Thread | Bundle | 30 |
| Sketching Materials | Set | 50 |
| Designer 2 |  | 30 |
| Fasteners and Buttons | Pack | 20 |
| Influencer Commision Fee |  |  |
| Sustainability Consultant |  | 40 |
| Business Analyst |  | 25 |
| Designer 3 |  | 30 |
| Pattern Makers |  | 16.5 |
| Recycled Polyester | Bundle | 50 |
| Bamboo fleece | Budle | 50 |
| Zippers | Pack | 50 |
| Cordura | Bundle | 40 |
| Pattern Paper | Rolls | 15 |
| Tracing Wheel | Each | 20 |
| Pattern Notcher | Each | 20 |
| Marking Tools | Each | 25 |
| Cotton Ribbing | Bundle | 50 |
| Air Freight |  |  |
| Sea Freight |  |  |
| Courier Service |  |  |
| Marketing Collateral |  |  |
| Hosting Subscription |  | 300 |
| Domain |  | 30 |
| Logistics Staff |  | 16.5 |
| Warehouse |  |  |
| Sales Manager |  | 30 |
| Certification Fees |  |  |
| Contingency Reserve |  |  |
| Management Reserve |  |  |
| Activity Reserve |  |  |
| Social Media Business Subscription |  |  |

## Schedule

| ID | WBS | Task | Type | Duration | Start | Finish | Predecessors | Total slack | Free slack | Resources | Work | Cost |
| --- | --- | --- | --- | --- | --- | --- | --- | --- | --- | --- | --- | --- |
| 1 | 1 | **Sustainable Jacket Project** |  | 143d | 2023-06-26 | 2024-01-10 |  | 0d |  |  | 3104h | 500,000 |
| 2 | 1.1 | Management Reserve |  | 142d | 2023-06-26 | 2024-01-09 |  | 1d |  | Management Reserve [0.1%] |  | 50,000 |
| 3 | 1.2 | Contingency Reserve |  | 142d | 2023-06-26 | 2024-01-09 |  | 1d |  | Contingency Reserve [0.1%] |  | 67,500 |
| 4 | 1.3 | **Design** |  | 50d | 2023-06-26 | 2023-09-01 |  | 0d |  |  | 920h | 33,374 |
| 5 | 1.3.1 | **Concept Development** |  | 25d | 2023-06-26 | 2023-07-28 |  | 0d |  |  | 408h | 13,094 |
| 6 | 1.3.1.1 | Conduct design analysis: market trend, user preference and branding |  | 5d | 2023-06-26 | 2023-06-30 |  | 0d |  | CAD Software [0.1%]; Designer 2; Project Manager; Product Developer 1 | 120h | 4,460 |
| 7 | 1.3.1.2 | Establish evaluation criteria for the design selection process |  | 6d | 2023-07-03 | 2023-07-10 | 6 | 0d |  | Project Manager; Business Analyst; Product Developer 1 | 96h | 2,832 |
| 8 | 1.3.1.3 | Brainstorming of design concepts |  | 2d | 2023-07-03 | 2023-07-04 | 6 | 4d |  | Designer 1; Designer 2 | 24h | 720 |
| 9 | 1.3.1.4 | Identify aesthetic requirements: colour, type, and textures |  | 3d | 2023-07-11 | 2023-07-13 | 8, 7 | 0d |  | Designer 1; Designer 2 | 48h | 1,440 |
| 10 | 1.3.1.5 | Create a conceptual sketch |  | 6d | 2023-07-14 | 2023-07-21 | 9 | 0d |  | Product Developer 2; Sketching Materials [1 Set] | 48h | 842 |
| 11 | 1.3.1.6 | Conduct design selection process |  | 2d | 2023-07-24 | 2023-07-25 | 10 | 0d |  | Designer 1; Designer 2; Project Manager | 48h | 1,920 |
| 12 | 1.3.1.7 | Document and communicate selected design to major stakeholders |  | 2d | 2023-07-26 | 2023-07-27 | 11 | 0d |  | Business Analyst | 16h | 400 |
| 13 | 1.3.1.8 | Final Design Approval | milestone | 1d | 2023-07-28 | 2023-07-28 | 12 | 0d |  | Project Manager | 8h | 480 |
| 14 | 1.3.2 | **Technical Specification** |  | 21d | 2023-07-11 | 2023-08-08 |  | 0d |  |  | 240h | 6,982 |
| 15 | 1.3.2.1 | Define material requirements to be used for the outer shell, lining, insulation and other components |  | 2d | 2023-07-14 | 2023-07-17 | 9 | 9d | 0d | Designer 1; Designer 2; Sketching Materials [1 Set]; Activity Reserve [0.1%] | 32h | 2,010 |
| 16 | 1.3.2.2 | Identify construction techniques to be used for seam and stiching methods |  | 2d | 2023-07-31 | 2023-08-01 | 13, 15 | 0d |  | Designer 1; Pattern Makers | 32h | 744 |
| 17 | 1.3.2.3 | Define the features and performance attributes: cushioning, wind resistance, water resistance, and breathability |  | 4d | 2023-07-11 | 2023-07-14 | 7 | 12d | 1d | Designer 3; Pattern Makers | 64h | 1,488 |
| 18 | 1.3.2.4 | Established sizing system and fit specifications |  | 3d | 2023-08-02 | 2023-08-04 | 16, 17 | 0d |  | Designer 3; Pattern Makers | 48h | 1,116 |
| 19 | 1.3.2.5 | Select fastener sand closure system to be used in the jacket |  | 2d | 2023-07-18 | 2023-07-19 | 15, 17 | 12d | 0d | Designer 2 | 16h | 480 |
| 20 | 1.3.2.6 | Document all the technical requirements |  | 2d | 2023-08-07 | 2023-08-08 | 18, 19 | 0d |  | Designer 2; Business Analyst; Product Developer 1 | 48h | 1,144 |
| 21 | 1.3.3 | **Sustainability** |  | 9d | 2023-08-09 | 2023-08-21 |  | 0d |  |  | 128h | 5,298 |
| 22 | 1.3.3.1 | Research materials that are eco-friend and sustainable |  | 5d | 2023-08-09 | 2023-08-15 | 20 | 0d |  | Sustainability Consultant | 40h | 1,600 |
| 23 | 1.3.3.2 | Identify areas to reduce waste through our design and production process |  | 3d | 2023-08-09 | 2023-08-11 | 20 | 2d |  | Project Manager | 24h | 1,440 |
| 24 | 1.3.3.3 | Established carbon footprint tracker |  | 4d | 2023-08-16 | 2023-08-21 | 23, 22 | 0d |  | Sustainability Consultant; Product Developer 2; Activity Reserve [0.1%] | 64h | 2,258 |

| ID | WBS | Task | Type | Duration | Start | Finish | Predecessors | Total slack | Free slack | Resources | Work | Cost |
| --- | --- | --- | --- | --- | --- | --- | --- | --- | --- | --- | --- | --- |
| 25 | 1.3.4 | **Compliance** |  | 9d | 2023-08-22 | 2023-09-01 |  | 0d |  |  | 144h | 8,000 |
| 26 | 1.3.4.1 | Obtain compliance certificate from Canadian Safety regulations |  | 5d | 2023-08-22 | 2023-08-28 | 23, 24 | 0d |  | Sustainability Consultant; Product Developer 1; Certification Fees [0.1%]; Activity Reserve [0.1%] | 80h | 5,760 |
| 27 | 1.3.4.2 | Determine the labelling in compliance with regulations and standards. |  | 4d | 2023-08-29 | 2023-09-01 | 26 | 0d |  | Designer 1; Sustainability Consultant | 64h | 2,240 |
| 28 | 1.4 | **Prototype** |  | 59d | 2023-07-20 | 2023-10-10 |  | 0d |  |  | 640h | 61,090 |
| 29 | 1.4.1 | **Virtual Version** |  | 37d | 2023-07-20 | 2023-09-08 |  | 0d |  |  | 232h | 7,760 |
| 30 | 1.4.1.1 | Create 2D drawings using AutoCAD sofware |  | 2d | 2023-07-20 | 2023-07-21 | 19 | 28d | 16d | CAD Designer; CAD Software [0.1%] | 16h | 880 |
| 31 | 1.4.1.2 | Incorporate material specification, aesthetics, and sizing systems as mentioned in the design documents |  | 4d | 2023-08-09 | 2023-08-14 | 20 | 12d | 0d | Designer 2; CAD Designer | 64h | 1,920 |
| 32 | 1.4.1.3 | Create a 3D model to simulate visualization and Virtual fitting. |  | 2d | 2023-08-15 | 2023-08-16 | 30, 31 | 12d |  | Designer 2; CAD Software [0.1%]; CAD Designer | 32h | 1,360 |
| 33 | 1.4.1.4 | Evaluate, Iterate and refine the 3D model |  | 5d | 2023-09-04 | 2023-09-08 | 32, 27 | 0d |  | Designer 1; Designer 3; CAD Designer | 120h | 3,600 |
| 34 | 1.4.2 | **Physical Version** |  | 33d | 2023-08-16 | 2023-09-29 |  | 0d |  |  | 200h | 46,586 |
| 35 | 1.4.2.1 | Select a sample makers to do the prototype version |  | 3d | 2023-09-11 | 2023-09-13 | 33 | 0d |  | Project Manager; Activity Reserve [0.1%] | 24h | 2,440 |
| 36 | 1.4.2.2 | Material Selection and Sourcing | milestone | 5d | 2023-08-16 | 2023-08-22 | 22 | 19d |  | Procurement Manager; Project Manager | 80h | 4,000 |
| 37 | 1.4.2.3 | Create pattern templates |  | 3d | 2023-09-14 | 2023-09-18 | 35 | 0d |  | Pattern Makers; Pattern Notcher [50 Each]; Pattern Paper [50 Rolls]; Tracing Wheel [50 Each]; Marking Tools [50 Each] | 24h | 4,396 |
| 38 | 1.4.2.4 | Cutting fabrics and assembly of fabric pieces |  | 3d | 2023-09-19 | 2023-09-21 | 36, 37 | 0d |  | Sample Sewer; Bamboo fleece [50 Budle]; Cordura [30 Bundle]; Recycled Polyester [30 Bundle]; Wool Fabric [50 Bundle]; Cotton Ribbing [50 Bundle]; Tracing Wheel [10 Each] | 24h | 13,500 |
| 39 | 1.4.2.5 | Produce several samples |  | 6d | 2023-09-22 | 2023-09-29 | 38 | 0d |  | Wool Fabric [100 Bundle]; Recycled Polyester [50 Bundle]; Bamboo fleece [50 Budle]; Cotton Ribbing [20 Bundle]; Fasteners and Buttons [5 Pack]; Sample Sewer; Thread [15 Bundle]; Zippers [10 Pack]; Activity Reserve [0.1%] | 48h | 22,250 |
| 40 | 1.4.3 | **Evaluation** |  | 7d | 2023-10-02 | 2023-10-10 |  | 0d |  |  | 208h | 6,744 |
| 41 | 1.4.3.1 | Conduct Focus Group to test functionality |  | 2d | 2023-10-02 | 2023-10-03 | 39 | 0d |  | Business Analyst; Product Developer 2; Marketing Manager | 48h | 1,144 |
| 42 | 1.4.3.2 | Refinement and Iteration | milestone | 5d | 2023-10-04 | 2023-10-10 | 41 | 0d |  | Business Analyst; Designer 3; Project Manager; Sample Sewer | 160h | 5,600 |
| 43 | 1.5 | **Procurement** |  | 57d | 2023-09-11 | 2023-11-28 |  | 0d |  |  | 696h | 211,188 |
| 44 | 1.5.1 | **Manufacturing Selection** |  | 28d | 2023-09-11 | 2023-10-18 |  | 0d |  |  | 248h | 12,828 |
| 45 | 1.5.1.1 | Create a short list of potential manufacturers |  | 3d | 2023-09-11 | 2023-09-13 | 33 | 14d | 0d | Logistics Manager; Procurement Manager; Logistics Staff | 72h | 2,028 |
| 46 | 1.5.1.2 | Send Request for Proposals (RFPs) to the manufacturers |  | 5d | 2023-09-14 | 2023-09-20 | 45 | 14d |  | Procurement Manager; Project Manager | 80h | 4,000 |
| 47 | 1.5.1.3 | Evaluate proposals and select manufacturer |  | 3d | 2023-10-11 | 2023-10-13 | 46, 42 | 0d |  | Procurement Manager; Project Manager | 48h | 2,400 |
| 48 | 1.5.1.4 | Contract negotiation | milestone | 3d | 2023-10-16 | 2023-10-18 | 47 | 0d |  | Procurement Manager; Project Manager; Activity Reserve [0.1%] | 48h | 4,400 |

| ID | WBS | Task | Type | Duration | Start | Finish | Predecessors | Total slack | Free slack | Resources | Work | Cost |
| --- | --- | --- | --- | --- | --- | --- | --- | --- | --- | --- | --- | --- |
| 49 | 1.5.2 | **Production** |  | 27d | 2023-10-11 | 2023-11-16 |  | 0d |  |  | 248h | 171,192 |
| 50 | 1.5.2.1 | Develop scheduling plan |  | 3d | 2023-10-16 | 2023-10-18 | 48SS | 6d |  | Project Manager; Activity Reserve [0.1%] | 24h | 1,940 |
| 51 | 1.5.2.2 | Develop a quality assurance process |  | 5d | 2023-10-11 | 2023-10-17 | 42 | 7d |  | Product Developer 1; Business Analyst | 80h | 1,660 |
| 52 | 1.5.2.3 | Review the manufacturer's raw materials sourcing |  | 6d | 2023-10-19 | 2023-10-26 | 48 | 0d |  | Project Manager; Product Developer 2; Sustainability Consultant; Activity Reserve [0.1%] | 144h | 7,592 |
| 53 | 1.5.2.4 | Production Starts | milestone | 15d | 2023-10-27 | 2023-11-16 | 52, 50, 51 | 0d |  | Outsource fee for 2000 Jackets [0.1%]; Activity Reserve [0.1%] |  | 160,000 |
| 54 | 1.5.3 | **Order Fulfillment** |  | 8d | 2023-11-17 | 2023-11-28 |  | 0d |  |  | 200h | 27,168 |
| 55 | 1.5.3.1 | Monitor the scheduling plan |  | 4d | 2023-11-17 | 2023-11-22 | 53 | 1d |  | Product Developer 2; Project Manager | 64h | 2,448 |
| 56 | 1.5.3.2 | Track the inventory levels |  | 5d | 2023-11-17 | 2023-11-23 | 53 | 0d |  | Logistics Manager; Logistic Management System [0.1%]; Air Freight [0.1%]; Sea Freight [0.1%]; Courier Service [0.1%]; Activity Reserve [0.1%] | 40h | 21,120 |
| 57 | 1.5.3.3 | Quality Assurance and Inspection | milestone | 2d | 2023-11-17 | 2023-11-20 | 53 | 3d |  | Product Developer 1; Project Manager; Product Developer 2 | 48h | 1,488 |
| 58 | 1.5.3.4 | Receive delivery |  | 3d | 2023-11-24 | 2023-11-28 | 55, 56, 57 | 0d |  | Logistics Manager; Project Manager | 48h | 2,112 |
| 59 | 1.6 | **Marketing** |  | 99d | 2023-07-31 | 2023-12-14 |  | 0d |  |  | 280h | 27,320 |
| 60 | 1.6.1 | **Branding** |  | 9d | 2023-07-31 | 2023-08-10 |  | 73d |  |  | 88h | 2,640 |
| 61 | 1.6.1.1 | Develop a brand name |  | 2d | 2023-07-31 | 2023-08-01 | 13 | 73d | 0d | Marketing Manager | 16h | 480 |
| 62 | 1.6.1.2 | Design logo |  | 2d | 2023-08-02 | 2023-08-03 | 61 | 73d | 0d | Designer 1; CAD Designer | 32h | 960 |
| 63 | 1.6.1.3 | Create a brand story that communicates sustainability and company values |  | 5d | 2023-08-04 | 2023-08-10 | 62 | 73d | 0d | Marketing Manager | 40h | 1,200 |
| 64 | 1.6.2 | **Materials** |  | 5d | 2023-08-11 | 2023-08-17 |  | 73d |  |  | 64h | 5,972 |
| 65 | 1.6.2.1 | Create brochures and flyers |  | 3d | 2023-08-11 | 2023-08-15 | 63 | 73d | 0d | Marketing Collateral [0.1%]; Marketing Manager; Product Developer 1 | 48h | 4,862 |
| 66 | 1.6.2.2 | Create website content |  | 2d | 2023-08-16 | 2023-08-17 | 65 | 73d |  | Marketing Manager; Domain; Hosting Subscription [200%] | 16h | 1,110 |
| 67 | 1.6.3 | **Campaigns** |  | 12d | 2023-11-29 | 2023-12-14 |  | 0d |  |  | 128h | 18,708 |
| 68 | 1.6.3.1 | Develop social media strategy on various platforms |  | 4d | 2023-11-29 | 2023-12-04 | 66, 58 | 0d |  | Product Developer 2; Marketing Manager; Activity Reserve [0.1%]; Social Media Business Subscription [0.1%] | 64h | 2,788 |
| 69 | 1.6.3.2 | Hire an agency to manage Search Engine Optimization (SEO) |  | 3d | 2023-12-05 | 2023-12-07 | 68 | 0d |  | Marketing Manager; SEO [0.1%] | 24h | 3,720 |
| 70 | 1.6.3.3 | Collaborate with influencers who aligns our brand value |  | 5d | 2023-12-08 | 2023-12-14 | 69 | 0d |  | Marketing Manager; Influencer Commision Fee [0.1%]; Activity Reserve [0.1%] | 40h | 12,200 |
| 71 | 1.7 | **Distribution** |  | 39d | 2023-11-17 | 2024-01-10 |  | 0d |  |  | 568h | 49,528 |
| 72 | 1.7.1 | **Inventory Management** |  | 24d | 2023-11-17 | 2023-12-20 |  | 0d |  |  | 128h | 3,044 |
| 73 | 1.7.1.1 | Evaluate and select Inventory Strategies to be used |  | 3d | 2023-11-17 | 2023-11-21 | 53 | 12d | 0d | Procurement Manager | 24h | 960 |
| 74 | 1.7.1.2 | Identify warehouse and distribution centers |  | 5d | 2023-11-22 | 2023-11-28 | 73 | 12d |  | Logistics Staff | 40h | 660 |
| 75 | 1.7.1.3 | Establish inventory control measures |  | 4d | 2023-12-15 | 2023-12-20 | 68, 74, 70 | 0d |  | Logistics Manager; Logistics Staff | 64h | 1,424 |

| ID | WBS | Task | Type | Duration | Start | Finish | Predecessors | Total slack | Free slack | Resources | Work | Cost |
| --- | --- | --- | --- | --- | --- | --- | --- | --- | --- | --- | --- | --- |
| 76 | 1.7.2 | **Order and Shipping** |  | 26d | 2023-11-22 | 2023-12-27 |  | 0d |  |  | 168h | 14,536 |
| 77 | 1.7.2.1 | Develop Order Processing System |  | 5d | 2023-12-21 | 2023-12-27 | 75 | 0d |  | Project Manager; Logistics Manager; Product Developer 2 | 120h | 4,180 |
| 78 | 1.7.2.2 | Identify Payment Processing System |  | 3d | 2023-11-22 | 2023-11-24 | 73 | 18d | 0d | Product Developer 1; Procurement Manager | 48h | 1,356 |
| 79 | 1.7.2.3 | Arrange transportation and shipping services |  | 5d | 2023-11-27 | 2023-12-01 | 78 | 18d |  | Courier Service [0.1%]; Delivery Service for distribution [0.1%]; Activity Reserve [0.1%] |  | 9,000 |
| 80 | 1.7.3 | **Partnership** |  | 10d | 2023-12-28 | 2024-01-10 |  | 0d |  |  | 272h | 31,948 |
| 81 | 1.7.3.1 | Identify distribution channels: Retail store, e-commerce, and websites |  | 5d | 2023-12-28 | 2024-01-03 | 79, 77 | 0d |  | Warehouse [0.1%]; Logistics Manager; Logistics Staff; Procurement Manager; Activity Reserve [0.1%] | 120h | 16,380 |
| 82 | 1.7.3.2 | Finalize and sign contract agreement | milestone | 2d | 2024-01-04 | 2024-01-05 | 81 | 0d |  | Procurement Manager; Project Manager; Business Analyst | 48h | 2,000 |
| 83 | 1.7.3.3 | Launch Product |  | 1d | 2024-01-08 | 2024-01-08 | 82 | 0d |  | Project Manager; Marketing Manager; Influencer Commision Fee [0.1%]; Sales Manager; Activity Reserve [0.1%] | 24h | 10,960 |
| 84 | 1.7.3.4 | Evaluate product and sales performance |  | 2d | 2024-01-09 | 2024-01-10 | 83 | 0d |  | Sales Manager; Project Manager; Product Developer 1; Product Developer 2; Sustainability Consultant | 80h | 2,608 |
