# Project Sustainable Jacket_Team Everest

Schedule from MS Project, 2023-06-26 to 2024-01-03.

## Calendars

- Standard: Mon-Fri 08:00-12:00, 13:00-17:00; Sat-Sun off.

## Schedule

| ID | WBS | Task | Type | Duration | Start | Finish | Predecessors | Total slack | Free slack |
| --- | --- | --- | --- | --- | --- | --- | --- | --- | --- |
| 1 | 1 | **Sustainable Jacket Project** |  | 138d | 2023-06-26 | 2024-01-03 |  | 0d |  |
| 2 | 1.1 | **Design** |  | 45d | 2023-06-26 | 2023-08-25 |  | 0d |  |
| 3 | 1.1.1 | **Concept Development** |  | 22d | 2023-06-26 | 2023-07-25 |  | 0d |  |
| 4 | 1.1.1.1 | Conduct design analysis: market trend, user preference and branding |  | 5d | 2023-06-26 | 2023-06-30 |  | 0d |  |
| 5 | 1.1.1.2 | Establish evaluation criteria for the design selection process |  | 3d | 2023-07-03 | 2023-07-05 | 4 | 0d |  |
| 6 | 1.1.1.3 | Brainstorming of design concepts |  | 2d | 2023-07-03 | 2023-07-04 | 4 | 1d |  |
| 7 | 1.1.1.4 | Identify aesthetic requirements: colour, type, and textures |  | 3d | 2023-07-06 | 2023-07-10 | 6, 5 | 0d |  |
| 8 | 1.1.1.5 | Create a conceptual sketch |  | 6d | 2023-07-11 | 2023-07-18 | 7 | 0d |  |
| 9 | 1.1.1.6 | Conduct design selection process |  | 2d | 2023-07-19 | 2023-07-20 | 8 | 0d |  |
| 10 | 1.1.1.7 | Document and communicate selected design to major stakeholders |  | 2d | 2023-07-21 | 2023-07-24 | 9 | 0d |  |
| 11 | 1.1.1.8 | Final Design Approval | milestone | 1d | 2023-07-25 | 2023-07-25 | 10 | 0d |  |
| 12 | 1.1.2 | **Technical Specification** |  | 21d | 2023-07-06 | 2023-08-03 |  | 0d |  |
| 13 | 1.1.2.1 | Define material requirements to be used for the outer shell, lining, insulation and other components |  | 2d | 2023-07-11 | 2023-07-12 | 7 | 9d | 0d |
| 14 | 1.1.2.2 | Identify construction techniques to be used for seam and stiching methods |  | 2d | 2023-07-26 | 2023-07-27 | 11, 13 | 0d |  |
| 15 | 1.1.2.3 | Define the features and performance attributes: cushioning, wind resistance, water resistance, and breathability |  | 4d | 2023-07-06 | 2023-07-11 | 5 | 12d | 1d |
| 16 | 1.1.2.4 | Establish sizing system and fit specifications |  | 3d | 2023-07-28 | 2023-08-01 | 14, 15 | 0d |  |
| 17 | 1.1.2.5 | Select fastener sand closure system to be used in the jacket |  | 2d | 2023-07-13 | 2023-07-14 | 13, 15 | 12d | 0d |
| 18 | 1.1.2.6 | Document all the technical requirements |  | 2d | 2023-08-02 | 2023-08-03 | 16, 17 | 0d |  |
| 19 | 1.1.3 | **Sustainability** |  | 7d | 2023-08-04 | 2023-08-14 |  | 0d |  |
| 20 | 1.1.3.1 | Research materials that are eco-friend and sustainable |  | 5d | 2023-08-04 | 2023-08-10 | 18 | 17d | 0d |
| 21 | 1.1.3.2 | Identify areas to reduce waste through our design and production process |  | 3d | 2023-08-04 | 2023-08-08 | 18 | 0d |  |
| 22 | 1.1.3.3 | Establish carbon footprint tracker |  | 4d | 2023-08-09 | 2023-08-14 | 21 | 0d |  |
| 23 | 1.1.4 | **Compliance** |  | 9d | 2023-08-15 | 2023-08-25 |  | 0d |  |
| 24 | 1.1.4.1 | Obtain compliance certificate from Canadian Safety regulations |  | 5d | 2023-08-15 | 2023-08-21 | 21, 22 | 0d |  |
| 25 | 1.1.4.2 | Determine the labelling in compliance with regulations and standards. |  | 4d | 2023-08-22 | 2023-08-25 | 24 | 0d |  |

| ID | WBS | Task | Type | Duration | Start | Finish | Predecessors | Total slack | Free slack |
| --- | --- | --- | --- | --- | --- | --- | --- | --- | --- |
| 26 | 1.2 | **Prototype** |  | 57d | 2023-07-17 | 2023-10-03 |  | 0d |  |
| 27 | 1.2.1 | **Virtual Version** |  | 35d | 2023-07-17 | 2023-09-01 |  | 0d |  |
| 28 | 1.2.1.1 | Create 2D drawings using AutoCAD sofware |  | 2d | 2023-07-17 | 2023-07-18 | 17 | 26d | 16d |
| 29 | 1.2.1.2 | Incorporate material specification, aesthetics, and sizing systems as mentioned in the design documents |  | 4d | 2023-08-04 | 2023-08-09 | 18 | 10d | 0d |
| 30 | 1.2.1.3 | Create a 3D model to simulate visualization and Virtual fitting. |  | 2d | 2023-08-10 | 2023-08-11 | 28, 29 | 10d |  |
| 31 | 1.2.1.4 | Evaluate, Iterate and refine the 3D model |  | 5d | 2023-08-28 | 2023-09-01 | 30, 25 | 0d |  |
| 32 | 1.2.2 | **Physical Version** |  | 31d | 2023-08-11 | 2023-09-22 |  | 0d |  |
| 33 | 1.2.2.1 | Select a sample makers to do the prototype version |  | 3d | 2023-09-04 | 2023-09-06 | 31 | 0d |  |
| 34 | 1.2.2.2 | Material Selection and Sourcing | milestone | 5d | 2023-08-11 | 2023-08-17 | 20 | 17d |  |
| 35 | 1.2.2.3 | Create pattern templates |  | 3d | 2023-09-07 | 2023-09-11 | 33 | 0d |  |
| 36 | 1.2.2.4 | Cutting fabrics and assembly of fabric pieces |  | 3d | 2023-09-12 | 2023-09-14 | 34, 35 | 0d |  |
| 37 | 1.2.2.5 | Produce several samples |  | 6d | 2023-09-15 | 2023-09-22 | 36 | 0d |  |
| 38 | 1.2.3 | **Evaluation** |  | 7d | 2023-09-25 | 2023-10-03 |  | 0d |  |
| 39 | 1.2.3.1 | Conduct Focus Group to test functionality |  | 2d | 2023-09-25 | 2023-09-26 | 37 | 0d |  |
| 40 | 1.2.3.2 | Refinement and Iteration | milestone | 5d | 2023-09-27 | 2023-10-03 | 39 | 0d |  |
| 41 | 1.3 | **Procurement** |  | 57d | 2023-09-04 | 2023-11-21 |  | 0d |  |
| 42 | 1.3.1 | **Manufacturing Selection** |  | 28d | 2023-09-04 | 2023-10-11 |  | 0d |  |
| 43 | 1.3.1.1 | Create a short list of potential manufacturers |  | 3d | 2023-09-04 | 2023-09-06 | 31 | 14d | 0d |
| 44 | 1.3.1.2 | Send Request for Proposals (RFPs) to the manufacturers |  | 5d | 2023-09-07 | 2023-09-13 | 43 | 14d |  |
| 45 | 1.3.1.3 | Evaluate proposals and select manufacturer |  | 3d | 2023-10-04 | 2023-10-06 | 44, 40 | 0d |  |
| 46 | 1.3.1.4 | Contract negotiation | milestone | 3d | 2023-10-09 | 2023-10-11 | 45 | 0d |  |
| 47 | 1.3.2 | **Production** |  | 27d | 2023-10-04 | 2023-11-09 |  | 0d |  |
| 48 | 1.3.2.1 | Develop scheduling plan |  | 3d | 2023-10-09 | 2023-10-11 | 46SS | 6d |  |
| 49 | 1.3.2.2 | Develop a quality assurance process |  | 5d | 2023-10-04 | 2023-10-10 | 40 | 7d |  |
| 50 | 1.3.2.3 | Review the manufacturer's raw materials sourcing |  | 6d | 2023-10-12 | 2023-10-19 | 46 | 0d |  |
| 51 | 1.3.2.4 | Production Starts | milestone | 15d | 2023-10-20 | 2023-11-09 | 50, 48, 49 | 0d |  |

| ID | WBS | Task | Type | Duration | Start | Finish | Predecessors | Total slack | Free slack |
| --- | --- | --- | --- | --- | --- | --- | --- | --- | --- |
| 52 | 1.3.3 | **Order Fulfillment** |  | 8d | 2023-11-10 | 2023-11-21 |  | 0d |  |
| 53 | 1.3.3.1 | Monitor the scheduling plan |  | 4d | 2023-11-10 | 2023-11-15 | 51 | 1d |  |
| 54 | 1.3.3.2 | Track the inventory levels |  | 5d | 2023-11-10 | 2023-11-16 | 51 | 0d |  |
| 55 | 1.3.3.3 | Quality Assurance and Inspection | milestone | 2d | 2023-11-10 | 2023-11-13 | 51 | 3d |  |
| 56 | 1.3.3.4 | Receive delivery |  | 3d | 2023-11-17 | 2023-11-21 | 53, 54, 55 | 0d |  |
| 57 | 1.4 | **Marketing** |  | 97d | 2023-07-26 | 2023-12-07 |  | 0d |  |
| 58 | 1.4.1 | **Branding** |  | 9d | 2023-07-26 | 2023-08-07 |  | 71d |  |
| 59 | 1.4.1.1 | Develop a brand name |  | 2d | 2023-07-26 | 2023-07-27 | 11 | 71d | 0d |
| 60 | 1.4.1.2 | Design logo |  | 2d | 2023-07-28 | 2023-07-31 | 59 | 71d | 0d |
| 61 | 1.4.1.3 | Create a brand story that communicates sustainability and company values |  | 5d | 2023-08-01 | 2023-08-07 | 60 | 71d | 0d |
| 62 | 1.4.2 | **Materials** |  | 5d | 2023-08-08 | 2023-08-14 |  | 71d |  |
| 63 | 1.4.2.1 | Create brochures and flyers |  | 3d | 2023-08-08 | 2023-08-10 | 61 | 71d | 0d |
| 64 | 1.4.2.2 | Create website content |  | 2d | 2023-08-11 | 2023-08-14 | 63 | 71d |  |
| 65 | 1.4.3 | **Campaigns** |  | 12d | 2023-11-22 | 2023-12-07 |  | 0d |  |
| 66 | 1.4.3.1 | Develop social media strategy on various platforms |  | 4d | 2023-11-22 | 2023-11-27 | 64, 56 | 0d |  |
| 67 | 1.4.3.2 | Hire an agency to manage Search Engine Optimization (SEO) |  | 3d | 2023-11-28 | 2023-11-30 | 66 | 0d |  |
| 68 | 1.4.3.3 | Collaborate with influencers who aligns our brand value |  | 5d | 2023-12-01 | 2023-12-07 | 67 | 0d |  |
| 69 | 1.5 | **Distribution** |  | 39d | 2023-11-10 | 2024-01-03 |  | 0d |  |
| 70 | 1.5.1 | **Inventory Management** |  | 24d | 2023-11-10 | 2023-12-13 |  | 0d |  |
| 71 | 1.5.1.1 | Evaluate and select Inventory Strategies to be used |  | 3d | 2023-11-10 | 2023-11-14 | 51 | 12d | 0d |
| 72 | 1.5.1.2 | Identify warehouse and distribution centers |  | 5d | 2023-11-15 | 2023-11-21 | 71 | 12d |  |
| 73 | 1.5.1.3 | Establish inventory control measures |  | 4d | 2023-12-08 | 2023-12-13 | 66, 72, 68 | 0d |  |
| 74 | 1.5.2 | **Order and Shipping** |  | 26d | 2023-11-15 | 2023-12-20 |  | 0d |  |
| 75 | 1.5.2.1 | Develop Order Processing System |  | 5d | 2023-12-14 | 2023-12-20 | 73 | 0d |  |
| 76 | 1.5.2.2 | Identify Payment Processing System |  | 3d | 2023-11-15 | 2023-11-17 | 71 | 18d | 0d |
| 77 | 1.5.2.3 | Arrange transportation and shipping services |  | 5d | 2023-11-20 | 2023-11-24 | 76 | 18d |  |

| ID | WBS | Task | Type | Duration | Start | Finish | Predecessors | Total slack |
| --- | --- | --- | --- | --- | --- | --- | --- | --- |
| 78 | 1.5.3 | **Partnership** |  | 10d | 2023-12-21 | 2024-01-03 |  | 0d |
| 79 | 1.5.3.1 | Identify distribution channels: Retail store, e-commerce, and websites |  | 5d | 2023-12-21 | 2023-12-27 | 77, 75 | 0d |
| 80 | 1.5.3.2 | Finalize and sign contract agreement | milestone | 2d | 2023-12-28 | 2023-12-29 | 79 | 0d |
| 81 | 1.5.3.3 | Launch Product |  | 1d | 2024-01-01 | 2024-01-01 | 80 | 0d |
| 82 | 1.5.3.4 | Evaluate product and sales performance |  | 2d | 2024-01-02 | 2024-01-03 | 81 | 0d |
